# Avignon Baseball Stadium

Schedule from MS Project, 2020-04-28 to 2023-06-07, costs in $, A marks actual dates.

## Calendars

- Baseball Stadium: Mon-Fri 08:00-12:00, 13:00-17:00; Sat-Sun off. Exceptions (off unless hours are given): 2020-01-01 to 2029-01-01 (January 1st, recurring), 2020-05-18 to 2029-05-21 (Victoria Day, recurring), 2020-07-01 to 2029-07-01 (Canada Day, recurring), 2020-09-07 to 2029-09-03 (Labor Day, recurring), 2020-10-12 to 2029-10-08 (Thanksgiving Day, recurring), 2020-12-25 to 2029-12-25 (Christmas, recurring), 2020-12-26 to 2029-12-26 (Boxing Day, recurring).

## Resources

| Resource | Unit | Rate | Cost per use |
| --- | --- | --- | --- |
| Site Superintendent |  | 40 |  |
| Security Team |  | 25 |  |
| Demo Team |  | 25 |  |
| Concrete Team |  | 30 |  |
| Steel Workers |  | 40 |  |
| Inspections |  |  |  |
| Labors |  | 20 |  |
| Project Manager |  | 60 |  |
| Roofing Workers |  | 22 |  |
| Regulatory Teams |  |  |  |
| Technical Teams |  |  |  |
| Steel |  | 8000 |  |
| Concrete |  |  | 200 |
| Electronics |  |  |  |
| Seating |  |  | 300 |
| Jumbotron Video Screen |  | 60000000 |  |
| piling machine |  |  | 50000 |
| welding machine |  |  | 4000 |
| Banner stand | stands | 200 |  |
| Project completion celebration |  |  |  |
| roof |  |  | 250 |

## Schedule

| ID | WBS | Task | Type | Duration | Start | Finish | Predecessors | Complete | Remaining | Total slack | Free slack | Resources | Work | Actual work | Cost | Actual cost |
| --- | --- | --- | --- | --- | --- | --- | --- | --- | --- | --- | --- | --- | --- | --- | --- | --- |
| 1 | 1 | **Pre-Construction Works** |  | 61d | 2020-04-28 A | 2020-07-23 |  | 16% | 51d | 0d |  |  | 480h | 80h | 9,600 | 4,800 |
| 2 | 1.1 | **Planning Phase** |  | 20d | 2020-04-28 A | 2020-05-26 |  | 50% | 10d | 0d |  |  | 160h | 80h | 9,600 | 4,800 |
| 3 | 1.1.1 | Develop Project Charter |  | 1d | 2020-04-28 A | 2020-04-28 A |  | 100% |  |  |  | Project Manager | 8h | 8h | 480 | 480 |
| 4 | 1.1.2 | Develop plans and drawings- RCC, Steel works, Roofing, HVAC, MEP |  | 14d | 2020-04-29 A | 2020-05-19 | 3 | 64% | 5d | 0d |  | Project Manager | 112h | 72h | 6,720 | 4,320 |
| 5 | 1.1.3 | Planning Resource |  | 5d | 2020-05-20 | 2020-05-26 | 4 |  |  | 0d |  | Project Manager | 40h |  | 2,400 |  |
| 6 | 1.2 | **Sanctions** |  | 40d | 2020-05-27 | 2020-07-22 |  |  |  | 0d |  |  | 320h |  |  |  |
| 7 | 1.2.1 | Administrative Sanction |  | 15d | 2020-05-27 | 2020-06-16 | 5 |  |  | 0d |  | Regulatory Teams | 120h |  |  |  |
| 8 | 1.2.2 | Technical Sanction |  | 25d | 2020-06-17 | 2020-07-22 | 7 |  |  | 0d |  | Technical Teams | 200h |  |  |  |
| 9 | 1.3 | Site Handover |  | 1d | 2020-07-23 | 2020-07-23 | 8 |  |  | 0d |  |  |  |  |  |  |
| 10 | 2 | Planning stage completed | milestone | 0d | 2020-07-23 | 2020-07-23 | 9 |  |  | 0d |  |  |  |  |  |  |
| 11 | 3 | **Construction Works** |  | 583d | 2020-04-28 | 2022-08-12 |  |  |  | 61d |  |  | 8008h |  | 448,970 |  |
| 12 | 3.1 | **Clear stadium site** |  | 131d | 2020-04-28 | 2020-11-02 |  |  |  | 61d |  |  | 728h |  | 22,120 |  |
| 13 | 3.1.1 | Site assessment and survey |  | 20d | 2020-07-24 | 2020-08-20 | 10SS |  |  | 0d |  | Labors; Site Superintendent | 320h |  | 9,600 |  |
| 14 | 3.1.2 | Hazardous material identification and removal |  | 30d | 2020-08-21 | 2020-10-02 | 13 |  |  | 0d |  | Labors | 240h |  | 4,800 |  |
| 15 | 3.1.3 | Site grading and leveling |  | 20d | 2020-10-05 | 2020-11-02 | 14 |  |  | 0d |  | Labors; welding machine | 160h |  | 7,200 |  |
| 16 | 3.1.4 | Order Banner |  | 1d | 2020-04-28 | 2020-04-28 |  |  |  | 790d |  | Site Superintendent; Banner stand [1 stands] | 8h |  | 520 |  |
| 17 | 3.2 | **Demolish building** |  | 30d | 2020-11-03 | 2020-12-14 |  |  |  | 147d |  |  | 320h |  | 11,600 |  |
| 18 | 3.2.1 | Pre-Demolition Planning |  | 5d | 2020-11-03 | 2020-11-09 | 15 |  |  | 147d | 0d | Project Manager | 40h |  | 2,400 |  |
| 19 | 3.2.2 | Utility disconnection |  | 5d | 2020-11-10 | 2020-11-16 | 18 |  |  | 147d | 0d | Labors | 40h |  | 800 |  |
| 20 | 3.2.3 | Site Clearing and Grading |  | 10d | 2020-11-17 | 2020-11-30 | 19 |  |  | 147d | 0d | Demo Team; Site Superintendent | 160h |  | 5,200 |  |
| 21 | 3.2.4 | Waste Management and Recycling |  | 10d | 2020-12-01 | 2020-12-14 | 20 |  |  | 147d | 0d | Site Superintendent | 80h |  | 3,200 |  |
| 22 | 3.3 | **Set up a construction site** |  | 33d | 2020-11-03 | 2020-12-17 |  |  |  | 627d |  |  | 168h |  | 5,280 |  |
| 23 | 3.3.1 | Site Preparation |  | 5d | 2020-11-03 | 2020-11-09 | 18SS |  |  | 648d | 0d | Labors; Site Superintendent | 80h |  | 2,400 |  |
| 24 | 3.3.2 | Site Layout and Marking |  | 4d | 2020-11-10 | 2020-11-13 | 23 |  |  | 648d | 21d | Site Superintendent; Labors | 64h |  | 1,920 |  |
| 25 | 3.3.3 | Site Testing and Inspections |  | 3d | 2020-12-15 | 2020-12-17 | 24, 21 |  |  | 627d |  | Site Superintendent | 24h |  | 960 |  |

| ID | WBS | Task | Duration | Start | Finish | Predecessors | Total slack | Free slack | Resources | Work | Cost |
| --- | --- | --- | --- | --- | --- | --- | --- | --- | --- | --- | --- |
| 26 | 3.4 | **Drive support piling** | 120d | 2020-11-03 | 2021-04-22 |  | 0d |  |  | 1728h | 109,520 |
| 27 | 3.4.1 | Surface Preparation for work | 24d | 2020-11-03 | 2020-12-04 | 15 | 0d |  | Concrete Team | 192h | 5,760 |
| 28 | 3.4.2 | Boring work | 24d | 2020-12-07 | 2021-01-12 | 27 | 0d |  | Labors | 192h | 3,840 |
| 29 | 3.4.3 | Mobilization and Setup | 24d | 2021-01-13 | 2021-02-15 | 28 | 0d |  | Concrete Team; Labors; Site Superintendent | 576h | 17,280 |
| 30 | 3.4.4 | Piling Execution | 24d | 2021-02-16 | 2021-03-19 | 29 | 0d |  | Concrete Team; Site Superintendent; piling machine | 384h | 63,440 |
| 31 | 3.4.5 | Quality Control and Inspection | 24d | 2021-03-22 | 2021-04-22 | 30 | 0d |  | Project Manager; Site Superintendent | 384h | 19,200 |
| 32 | 3.5 | **Pour lower concrete bowl** | 57d | 2021-04-23 | 2021-07-14 |  | 0d |  |  | 720h | 21,200 |
| 33 | 3.5.1 | Reinforcement Installation | 20d | 2021-04-23 | 2021-05-21 | 31 | 0d |  | Labors | 160h | 3,200 |
| 34 | 3.5.2 | Formwork Preparation | 20d | 2021-04-23 | 2021-05-21 | 33SS | 0d |  | Concrete Team | 160h | 4,800 |
| 35 | 3.5.3 | Concrete Placement | 15d | 2021-05-26 | 2021-06-15 | 34FS+2d | 0d |  | Concrete Team; Site Superintendent | 240h | 8,400 |
| 36 | 3.5.4 | Curing and formwork removal | 20d | 2021-06-16 | 2021-07-14 | 35 | 0d |  | Concrete Team | 160h | 4,800 |
| 37 | 3.6 | **Pour main concourse** | 120d | 2021-07-15 | 2022-01-05 |  | 0d |  |  | 1664h | 49,650 |
| 38 | 3.6.1 | Formwork Construction | 49d | 2021-07-15 | 2021-09-22 | 36, 21 | 0d |  | Labors | 392h | 7,840 |
| 39 | 3.6.2 | Reinforcement Placement | 49d | 2021-07-15 | 2021-09-22 | 38SS | 0d |  | Concrete Team | 392h | 11,760 |
| 40 | 3.6.3 | Concrete Pouring | 40d | 2021-09-24 | 2021-11-19 | 39FS+1d | 0d |  | Concrete Team; Site Superintendent; Concrete [800%]; roof | 640h | 22,850 |
| 41 | 3.6.4 | Finishing and Curing | 30d | 2021-11-22 | 2022-01-05 | 40 | 0d |  | Concrete Team | 240h | 7,200 |
| 42 | 3.7 | **Install playing field** | 90d | 2022-01-06 | 2022-05-11 |  | 200d |  | welding machine | 960h | 140,000 |
| 43 | 3.7.1 | Turf installation | 35d | 2022-01-06 | 2022-02-23 | 21, 41 | 200d | 0d | Labors; Steel [1000%] | 280h | 85,600 |
| 44 | 3.7.2 | Markings and signage | 30d | 2022-02-24 | 2022-04-06 | 43 | 200d | 0d | Labors; Site Superintendent | 480h | 14,400 |
| 45 | 3.7.3 | Goalposts and equipment installation | 25d | 2022-04-07 | 2022-05-11 | 44 | 200d | 0d | Labors; Steel [400%] | 200h | 36,000 |
| 46 | 3.8 | **MEP** | 65d | 2022-05-12 | 2022-08-12 |  | 208d |  |  | 760h | 19,200 |
| 47 | 3.8.1 | Install electrical components | 30d | 2022-05-12 | 2022-06-23 | 45 | 208d | 0d | Labors; welding machine | 240h | 8,800 |
| 48 | 3.8.2 | Install plumbing components | 45d | 2022-05-12 | 2022-07-15 | 47SS | 208d | 0d | Labors | 360h | 7,200 |
| 49 | 3.8.3 | Install safety measures ( fire and smoke detectors) | 20d | 2022-07-18 | 2022-08-12 | 48 | 208d |  | Labors | 160h | 3,200 |

| ID | WBS | Task | Type | Duration | Start | Finish | Predecessors | Total slack | Free slack | Resources | Work | Cost |
| --- | --- | --- | --- | --- | --- | --- | --- | --- | --- | --- | --- | --- |
| 50 | 3.9 | **Construct an upper steel bowl** |  | 120d | 2021-07-15 | 2022-01-05 |  | 0d |  |  | 960h | 70,400 |
| 51 | 3.9.1 | Prepare the steel bowl components |  | 45d | 2021-07-15 | 2021-09-16 | 21, 36 | 0d |  | Steel Workers; Steel [400%] | 360h | 46,400 |
| 52 | 3.9.2 | Assemble the steel bowl components |  | 45d | 2021-09-17 | 2021-11-19 | 51 | 0d |  | Steel Workers | 360h | 14,400 |
| 53 | 3.9.3 | Complete documentation and record-keeping |  | 30d | 2021-11-22 | 2022-01-05 | 52 | 0d |  | Site Superintendent | 240h | 9,600 |
| 54 | 4 | Work Completion | milestone | 0d | 2020-04-28 | 2020-04-28 |  | 791d |  |  |  |  |
| 55 | 5 | **Roofing and finishing Works** |  | 420d | 2021-07-15 | 2023-03-09 |  | 63d |  |  | 9520h | 60,948,280 |
| 56 | 5.1 | **Install seats** |  | 140d | 2022-01-06 | 2022-07-22 |  | 0d |  |  | 2240h | 69,180 |
| 57 | 5.1.1 | Seat Installation Preparation |  | 27d | 2022-01-06 | 2022-02-11 | 41, 53 | 0d |  | Project Manager; Site Superintendent | 432h | 21,600 |
| 58 | 5.1.2 | Seat Installation |  | 35d | 2022-02-14 | 2022-04-01 | 57 | 0d |  | Labors; Security Team; Seating [2500%] | 560h | 12,900 |
| 59 | 5.1.3 | Quality Assurance and Inspections |  | 55d | 2022-04-04 | 2022-06-20 | 58 | 0d |  | Labors; Site Superintendent | 880h | 26,400 |
| 60 | 5.1.4 | Testing and Commissioning |  | 23d | 2022-06-21 | 2022-07-22 | 59 | 0d |  | Labors; Security Team | 368h | 8,280 |
| 61 | 5.2 | **Build luxury boxes** |  | 90d | 2022-02-14 | 2022-06-20 |  | 173d |  |  | 720h | 24,500 |
| 62 | 5.2.1 | Design Phase |  | 30d | 2022-02-14 | 2022-03-25 | 41, 53 | 173d | 0d | Project Manager | 240h | 14,400 |
| 63 | 5.2.2 | Construction Phase |  | 30d | 2022-03-28 | 2022-05-06 | 62 | 173d | 0d | Labors | 240h | 4,800 |
| 64 | 5.2.3 | Final Inspections and Handover |  | 30d | 2022-05-09 | 2022-06-20 | 63 | 173d |  | Labors | 240h | 4,800 |
| 65 | 5.3 | **Install electronic scoreboards** |  | 30d | 2022-01-06 | 2022-02-16 |  | 333d |  |  | 240h | 6,400 |
| 66 | 5.3.1 | Scoreboard Installation |  | 10d | 2022-01-06 | 2022-01-19 | 41, 53 | 333d | 0d | Labors | 80h | 1,600 |
| 67 | 5.3.2 | Integration and Connectivity |  | 10d | 2022-01-20 | 2022-02-02 | 66 | 333d | 0d | Labors | 80h | 1,600 |
| 68 | 5.3.3 | Project Closure |  | 10d | 2022-02-03 | 2022-02-16 | 67 | 333d |  | Site Superintendent | 80h | 3,200 |
| 69 | 5.4 | **Stadium infrastructure** |  | 120d | 2022-01-06 | 2022-06-23 |  | 170d |  |  | 1920h | 52,800 |
| 70 | 5.4.1 | Foundation Construction |  | 50d | 2022-01-06 | 2022-03-16 | 41, 53 | 170d | 0d | Labors; Site Superintendent | 800h | 24,000 |
| 71 | 5.4.2 | Infrastructure Construction |  | 40d | 2022-03-17 | 2022-05-11 | 70 | 170d | 0d | Labors; Site Superintendent | 640h | 19,200 |
| 72 | 5.4.3 | Amenities and Facilities |  | 30d | 2022-05-12 | 2022-06-23 | 71 | 170d |  | Labors | 480h | 9,600 |
| 73 | 5.5 | **Construct steel canopy** |  | 75d | 2022-07-25 | 2022-11-08 |  | 0d |  |  | 800h | 84,000 |
| 74 | 5.5.1 | Site Preparation |  | 25d | 2022-07-25 | 2022-08-26 | 60 | 0d |  | Labors; Steel [850%] | 200h | 72,000 |
| 75 | 5.5.2 | Steel fabrication |  | 25d | 2022-08-29 | 2022-10-03 | 74 | 0d |  | Labors | 200h | 4,000 |
| 76 | 5.5.3 | Steel erection |  | 25d | 2022-10-04 | 2022-11-08 | 75 | 0d |  | Labors | 400h | 8,000 |

| ID | WBS | Task | Duration | Start | Finish | Predecessors | Total slack | Free slack | Resources | Work | Cost |
| --- | --- | --- | --- | --- | --- | --- | --- | --- | --- | --- | --- |
| 77 | 5.6 | **Light installation** | 30d | 2022-11-09 | 2022-12-20 |  | 0d |  |  | 240h | 36,800 |
| 78 | 5.6.1 | Electrical Infrastructure | 9d | 2022-11-09 | 2022-11-21 | 76 | 0d |  | Labors | 72h | 1,440 |
| 79 | 5.6.2 | Lighting Fixture Installation | 13d | 2022-11-22 | 2022-12-08 | 78 | 0d |  | Labors; Steel [400%] | 104h | 34,080 |
| 80 | 5.6.3 | Control Systems and Automation | 8d | 2022-12-09 | 2022-12-20 | 79 | 0d |  | Labors | 64h | 1,280 |
| 81 | 5.7 | **HVAC** | 55d | 2022-12-21 | 2023-03-09 |  | 0d |  |  | 600h | 14,400 |
| 82 | 5.7.1 | HVAC Design | 25d | 2022-12-21 | 2023-01-26 | 80 | 0d |  | Technical Teams | 200h |  |
| 83 | 5.7.2 | Installation and Construction | 30d | 2023-01-27 | 2023-03-09 | 82 | 0d |  | Labors | 240h | 4,800 |
| 84 | 5.7.3 | Testing and Commissioning | 20d | 2023-01-27 | 2023-02-23 | 83SS, 80FF | 0d |  | Project Manager | 160h | 9,600 |
| 85 | 5.8 | **Build roof supports** | 90d | 2021-07-15 | 2021-11-19 |  | 160d |  |  | 720h | 14,650 |
| 86 | 5.8.1 | Construct columns and support beams | 27d | 2021-07-15 | 2021-08-20 | 36 | 160d | 0d | Labors | 216h | 4,320 |
| 87 | 5.8.2 | Install roof trusses or framework | 32d | 2021-08-23 | 2021-10-06 | 86 | 160d | 0d | Labors; roof [900%] | 256h | 5,370 |
| 88 | 5.8.3 | Install secondary support structures | 31d | 2021-10-07 | 2021-11-19 | 87 | 160d | 0d | Labors | 248h | 4,960 |
| 89 | 5.9 | **Construct roof** | 70d | 2021-11-22 | 2022-03-02 |  | 160d |  |  | 560h | 11,950 |
| 90 | 5.9.1 | Foundation Construction | 25d | 2021-11-22 | 2021-12-28 | 88 | 160d | 0d | Labors | 200h | 4,000 |
| 91 | 5.9.2 | Structural Framework Construction | 25d | 2021-12-29 | 2022-02-02 | 90 | 160d | 0d | Labors | 200h | 4,000 |
| 92 | 5.9.3 | Roofing Installation | 20d | 2022-02-03 | 2022-03-02 | 91 | 160d | 0d | Labors; roof [1200%] | 160h | 3,450 |
| 93 | 5.10 | **Install roof tracks** | 90d | 2021-10-07 | 2022-02-15 |  | 171d |  |  | 840h | 20,890 |
| 94 | 5.10.1 | Install support structures | 15d | 2021-10-07 | 2021-10-28 | 87 | 171d | 0d | Roofing Workers; Site Superintendent; roof | 240h | 7,690 |
| 95 | 5.10.2 | Install roof tracks | 45d | 2021-10-29 | 2022-01-04 | 94 | 171d | 0d | Roofing Workers | 360h | 7,920 |
| 96 | 5.10.3 | Test and inspect the installed tracks | 30d | 2022-01-05 | 2022-02-15 | 95 | 171d | 11d | Roofing Workers; Inspections [0.1%] | 240h | 5,280 |
| 97 | 5.11 | **Install roof** | 100d | 2022-03-03 | 2022-07-22 |  | 160d |  |  | 640h | 60,612,710 |
| 98 | 5.11.1 | Site Preparation | 30d | 2022-03-03 | 2022-04-13 | 92, 96 | 160d | 0d | Roofing Workers; roof [550%] | 240h | 5,530 |
| 99 | 5.11.2 | Roof Installation | 30d | 2022-04-14 | 2022-05-26 | 98 | 160d | 0d | Roofing Workers | 240h | 5,280 |
| 100 | 5.11.3 | Quality Assurance and Testing | 30d | 2022-05-27 | 2022-07-08 | 99 | 160d | 0d | Inspections [0.1%] |  | 300 |
| 101 | 5.11.4 | Jumbotron Installation | 10d | 2022-07-11 | 2022-07-22 | 100 | 223d |  | Technical Teams; Labors; Jumbotron Video Screen | 160h | 60,601,600 |

| ID | WBS | Task | Type | Duration | Start | Finish | Predecessors | Total slack | Deadline | Resources | Work | Cost |
| --- | --- | --- | --- | --- | --- | --- | --- | --- | --- | --- | --- | --- |
| 102 | 6 | **Inspection** |  | 72d | 2023-02-24 | 2023-06-06 |  | 0d |  |  | 776h | 48,890 |
| 103 | 6.1 | Structural Inspection: |  | 20d | 2023-02-24 | 2023-03-23 | 45, 64, 72, 80, 100, 84 | 0d |  | Inspections [0.1%] |  | 20,000 |
| 104 | 6.2 | Electrical Inspection |  | 30d | 2023-03-24 | 2023-05-04 | 103 | 0d |  | Labors; Site Superintendent | 480h | 14,400 |
| 105 | 6.3 | Mechanical inspection |  | 7d | 2023-05-05 | 2023-05-16 | 104 | 0d |  | Site Superintendent | 56h | 2,240 |
| 106 | 6.4 | Documentation and Reporting |  | 15d | 2023-05-17 | 2023-06-06 | 105 | 0d |  | Project Manager; Site Superintendent | 240h | 12,250 |
| 107 | 7 | Handover |  | 1d | 2023-06-07 | 2023-06-07 | 106 | 0d |  | Project Manager; Site Superintendent; Project completion celebration [0.1%] | 16h | 1,100 |
| 108 | 8 | Project Completion | milestone | 0d | 2023-06-07 | 2023-06-07 | 107 | 0d | 2024-04-20 |  |  |  |
